# Dominion_Groep3_ManagementDossierNew

Schedule from MS Project, 2016-03-21 to 2016-07-14, costs in €, A marks actual dates.

## Calendars

- Standard: Mon-Fri 08:00-12:00, 13:00-17:00; Sat-Sun off.

## Resources

| Resource | Rate |
| --- | --- |
| Stef vanremoortele | 80 |
| Oliver Martin | 50 |
| Olivier Vanheste | 50 |
| familie, vrienden, ... |  |

## Schedule

| ID | WBS | Task | Type | Duration | Start | Finish | Predecessors | Complete | Remaining | Actual finish | Resources | Work | Actual work | Cost | Actual cost |
| --- | --- | --- | --- | --- | --- | --- | --- | --- | --- | --- | --- | --- | --- | --- | --- |
| 1 | 1 | **Analyse fase** |  | 1w | 2016-03-21 A | 2016-03-25 A |  | 100% |  |  |  | 88h | 88h | 5,240 | 5,240 |
| 2 | 1.1 | opstellen ERD | manual | 2d | 2016-03-21 A | 2016-03-22 A |  | 100% |  |  | Oliver Martin; Stef vanremoortele [25%] | 20h | 20h | 1,120 | 1,120 |
| 3 | 1.2 | mapping relationeel model | manual | 2d | 2016-03-23 A | 2016-03-24 A | 2 | 100% |  |  | Oliver Martin; Stef vanremoortele [25%] | 20h | 20h | 1,120 | 1,120 |
| 4 | 1.3 | ideeën wireframes | manual | 2d | 2016-03-21 A | 2016-03-22 A |  | 100% |  |  | Olivier Vanheste [50%] | 8h | 8h | 400 | 400 |
| 5 | 1.4 | opzoeken informatie, afbeeldingen,… | manual | 5d | 2016-03-21 A | 2016-03-25 A |  | 100% |  |  | Olivier Vanheste [50%]; Stef vanremoortele [50%] | 40h | 40h | 2,600 | 2,600 |
| 6 | 2 | **ontwikkelings fase** |  | 30d | 2016-03-28 A | 2016-05-06 |  | 81% | 5.63d |  |  | 720h | 585.6h | 43,200 | 36,144 |
| 7 | 2.1 | uitwerken html/css/javascript | manual | 28d | 2016-03-30 A | 2016-05-06 |  | 65% | 9.8d |  | Olivier Vanheste; Oliver Martin [50%] | 336h | 218.4h | 16,800 | 10,920 |
| 8 | 2.2 | uitwerken javaclient | manual | 28d | 2016-03-30 A | 2016-05-06 |  | 95% | 1.4d |  | Stef vanremoortele; Oliver Martin [50%] | 336h | 319.2h | 23,520 | 22,344 |
| 9 | 2.3 | opstellen database | manual | 1d | 2016-03-28 A | 2016-03-28 A | 2 | 100% |  |  | Oliver Martin; Stef vanremoortele | 16h | 16h | 1,040 | 1,040 |
| 10 | 2.4 | opzetten server | manual | 1d | 2016-03-29 A | 2016-03-29 A |  | 100% |  |  | Oliver Martin; Stef vanremoortele | 16h | 16h | 1,040 | 1,040 |
| 11 | 2.5 | opstellen wireframe | manual | 2d | 2016-03-28 A | 2016-03-29 A | 4 | 100% |  |  | Olivier Vanheste | 16h | 16h | 800 | 800 |
| 12 | 2.6 | alpha versie | milestone, manual | 1d | 2016-05-06 A | 2016-05-06 |  | 75% | 0.25d |  |  |  |  |  |  |
| 13 | 3 | **test fase** |  | 10d | 2016-05-09 | 2016-05-20 |  |  |  |  |  | 92h |  | 2,584 |  |
| 14 | 3.1 | mensen zoeken om te testen | manual | 3d | 2016-05-09 | 2016-05-11 |  |  |  |  | Olivier Vanheste [40%]; Oliver Martin [40%]; Stef vanremoortele [20%] | 24h |  | 1,344 |  |
| 15 | 3.2 | testen | manual | 5d | 2016-05-12 | 2016-05-18 | 14 |  |  |  | familie, vrienden, ... | 40h |  |  |  |
| 16 | 3.3 | feedback testers | manual | 1d | 2016-05-19 | 2016-05-19 | 15 |  |  |  | familie, vrienden, ... | 8h |  |  |  |
| 17 | 3.4 | feedback implementeren in betaversie | manual | 1d | 2016-05-20 | 2016-05-20 |  |  |  |  | Stef vanremoortele; Oliver Martin [50%]; Olivier Vanheste | 20h |  | 1,240 |  |
| 18 | 3.5 | betaversie | milestone, manual | 1d | 2016-05-09 | 2016-05-09 | 12 |  |  |  |  |  |  |  |  |
| 19 | 4 | **slot fase** |  | 49d | 2016-05-09 A | 2016-07-14 |  | 100% |  | 2016-05-26 |  | 162.4h | 162.4h | 10,328 | 10,328 |
| 20 | 4.1 | opstellen documenten | manual | 9d | 2016-05-09 A | 2016-05-19 A |  | 100% |  |  | Oliver Martin [60%]; Olivier Vanheste [60%]; Stef vanremoortele [80%] | 110.4h | 110.4h | 7,248 | 7,248 |
| 21 | 4.2 | indienen documenten | milestone, manual | 1d | 2016-05-20 A | 2016-05-20 A | 20 | 100% |  |  | Oliver Martin; Olivier Vanheste; Stef vanremoortele | 24h | 24h | 1,440 | 1,440 |
| 22 | 4.3 | powerpoint opstellen | manual | 1d | 2016-05-20 A | 2016-05-20 A |  | 100% |  |  | Oliver Martin [50%] | 4h | 4h | 200 | 200 |
| 23 | 4.4 | presentatie project | milestone, manual | 1d | 2016-05-26 A | 2016-05-26 A | 22 | 100% |  |  | Oliver Martin; Olivier Vanheste; Stef vanremoortele | 24h | 24h | 1,440 | 1,440 |
